# Software Development Plan

How a schedule from MS Project changed from version to version. A marks actual dates.

## Version 1 (data date 2014-11-06, saved 2014-11-07, file Software Development Plan.mpp)

Note of the change: Added example plans

| ID | WBS | Task | Duration | Start | Finish | Predecessors | Total float |
| --- | --- | --- | --- | --- | --- | --- | --- |
| 1 | 1 | **Scope** | 3.5d | 2014-11-06 | 2014-11-11 |  | 0d |
| 2 |  | Determine project scope | 4h | 2014-11-06 | 2014-11-06 |  | 0d |
| 3 |  | Secure project sponsorship | 1d | 2014-11-06 | 2014-11-07 | 2 | 0d |
| 4 |  | Define preliminary resources | 1d | 2014-11-07 | 2014-11-10 | 3 | 0d |
| 5 |  | Secure core resources | 1d | 2014-11-10 | 2014-11-11 | 4 | 0d |
| 6 |  | Scope complete | 0d | 2014-11-11 | 2014-11-11 | 5 | 0d |
| 7 | 2 | **Analysis/Software Requirements** | 14d | 2014-11-11 | 2014-12-01 |  | 0d |
| 8 |  | Conduct needs analysis | 5d | 2014-11-11 | 2014-11-18 | 6 | 0d |
| 9 |  | Draft preliminary software specifications | 3d | 2014-11-18 | 2014-11-21 | 8 | 0d |
| 10 |  | Develop preliminary budget | 2d | 2014-11-21 | 2014-11-25 | 9 | 0d |
| 11 |  | Review software specifications/budget with team | 4h | 2014-11-25 | 2014-11-25 | 10 | 0d |
| 12 |  | Incorporate feedback on software specifications | 1d | 2014-11-26 | 2014-11-26 | 11 | 0d |
| 13 |  | Develop delivery timeline | 1d | 2014-11-27 | 2014-11-27 | 12 | 0d |
| 14 |  | Obtain approvals to proceed (concept, timeline, budget) | 4h | 2014-11-28 | 2014-11-28 | 13 | 0d |
| 15 |  | Secure required resources | 1d | 2014-11-28 | 2014-12-01 | 14 | 0d |
| 16 |  | Analysis complete | 0d | 2014-12-01 | 2014-12-01 | 15 | 0d |
| 17 | 3 | **Design** | 14.5d | 2014-12-01 | 2014-12-19 |  | 0d |
| 18 |  | Review preliminary software specifications | 2d | 2014-12-01 | 2014-12-03 | 16 | 0d |
| 19 |  | Develop functional specifications | 5d | 2014-12-03 | 2014-12-10 | 18 | 0d |
| 20 |  | Develop prototype based on functional specifications | 4d | 2014-12-10 | 2014-12-16 | 19 | 0d |
| 21 |  | Review functional specifications | 2d | 2014-12-16 | 2014-12-18 | 20 | 0d |
| 22 |  | Incorporate feedback into functional specifications | 1d | 2014-12-18 | 2014-12-19 | 21 | 0d |
| 23 |  | Obtain approval to proceed | 4h | 2014-12-19 | 2014-12-19 | 22 | 0d |
| 24 |  | Design complete | 0d | 2014-12-19 | 2014-12-19 | 23 | 0d |
| 25 | 4 | **Development** | 21.75d | 2014-12-22 | 2015-01-20 |  | 0d |
| 26 |  | Review functional specifications | 1d | 2014-12-22 | 2014-12-22 | 24 | 0d |
| 27 |  | Identify modular/tiered design parameters | 1d | 2014-12-23 | 2014-12-23 | 26 | 0d |
| 28 |  | Assign development staff | 1d | 2014-12-24 | 2014-12-24 | 27 | 0d |
| 29 |  | Develop code | 15d | 2014-12-25 | 2015-01-14 | 28 | 0d |
| 30 |  | Developer testing (primary debugging) | 15d | 2014-12-30 | 2015-01-20 | 29FS-7.5% | 0d |
| 31 |  | Development complete | 0d | 2015-01-20 | 2015-01-20 | 30 | 0d |
| 32 | 5 | **Testing** | 48.75d | 2014-12-22 | 2015-02-26 |  | 15d |
| 33 |  | Develop unit test plans using product specifications | 4d | 2014-12-22 | 2014-12-25 | 24 | 17.75d |
| 34 |  | Develop integration test plans using product specifications | 4d | 2014-12-22 | 2014-12-25 | 24 | 59.75d |
| 35 | 5.3 | **Unit Testing** | 15d | 2015-01-20 | 2015-02-10 |  | 0d |
| 36 |  | Review modular code | 5d | 2015-01-20 | 2015-01-27 | 33, 31 | 0d |
| 37 |  | Test component modules to product specifications | 2d | 2015-01-27 | 2015-01-29 | 31, 36 | 0d |
| 38 |  | Identify anomalies to product specifications | 3d | 2015-01-29 | 2015-02-03 | 37 | 0d |
| 39 |  | Modify code | 3d | 2015-02-03 | 2015-02-06 | 38 | 0d |
| 40 |  | Re-test modified code | 2d | 2015-02-06 | 2015-02-10 | 39 | 0d |
| 41 |  | Unit testing complete | 0d | 2015-02-10 | 2015-02-10 | 40 | 0d |
| 42 | 5.4 | **Integration Testing** | 12d | 2015-02-10 | 2015-02-26 |  | 0d |
| 43 |  | Test module integration | 5d | 2015-02-10 | 2015-02-17 | 41 | 0d |
| 44 |  | Identify anomalies to specifications | 2d | 2015-02-17 | 2015-02-19 | 43 | 0d |
| 45 |  | Modify code | 3d | 2015-02-19 | 2015-02-24 | 44 | 0d |
| 46 |  | Re-test modified code | 2d | 2015-02-24 | 2015-02-26 | 45 | 0d |
| 47 |  | Integration testing complete | 0d | 2015-02-26 | 2015-02-26 | 46 | 0d |
| 48 | 6 | **Training** | 45.75d | 2014-12-22 | 2015-02-23 |  | 3d |
| 49 |  | Develop training specifications for end users | 3d | 2014-12-22 | 2014-12-24 | 24 | 21.75d |
| 50 |  | Develop training specifications for helpdesk support staff | 3d | 2014-12-22 | 2014-12-24 | 24 | 21.75d |
| 51 |  | Identify training delivery methodology (computer based training, classroom, etc.) | 2d | 2014-12-22 | 2014-12-23 | 24 | 22.75d |
| 52 |  | Develop training materials | 3w | 2015-01-20 | 2015-02-10 | 49, 31, 50, 51 | 3d |
| 53 |  | Conduct training usability study | 4d | 2015-02-10 | 2015-02-16 | 52 | 3d |
| 54 |  | Finalize training materials | 3d | 2015-02-16 | 2015-02-19 | 53 | 3d |
| 55 |  | Develop training delivery mechanism | 2d | 2015-02-19 | 2015-02-23 | 54 | 3d |
| 56 |  | Training materials complete | 0d | 2015-02-23 | 2015-02-23 | 55 | 3d |
| 57 | 7 | **Documentation** | 30.5d | 2014-12-22 | 2015-02-02 |  | 18.25d |
| 58 |  | Develop Help specification | 1d | 2014-12-22 | 2014-12-22 | 24 | 27.75d |
| 59 |  | Develop Help system | 3w | 2015-01-05 | 2015-01-26 | 58, 29FS-5% | 18.25d |
| 60 |  | Review Help documentation | 3d | 2015-01-26 | 2015-01-29 | 59 | 18.25d |
| 61 |  | Incorporate Help documentation feedback | 2d | 2015-01-29 | 2015-02-02 | 60 | 18.25d |
| 62 |  | Develop user manuals specifications | 2d | 2014-12-22 | 2014-12-23 | 24 | 27.75d |
| 63 |  | Develop user manuals | 3w | 2015-01-05 | 2015-01-26 | 62, 29FS-5% | 19.25d |
| 64 |  | Review all user documentation | 2d | 2015-01-26 | 2015-01-28 | 63 | 19.25d |
| 65 |  | Incorporate user documentation feedback | 2d | 2015-01-28 | 2015-01-30 | 64 | 19.25d |
| 66 |  | Documentation complete | 0d | 2015-02-02 | 2015-02-02 | 65, 61 | 18.25d |
| 67 | 8 | **Pilot** | 70.25d | 2014-12-01 | 2015-03-09 |  | 0d |
| 68 |  | Identify test group | 1d | 2014-12-01 | 2014-12-02 | 16 | 61.25d |
| 69 |  | Develop software delivery mechanism | 1d | 2014-12-02 | 2014-12-03 | 68 | 61.25d |
| 70 |  | Install/deploy software | 1d | 2015-02-26 | 2015-02-27 | 47, 69, 66, 56 | 0d |

| ID | WBS | Task | Duration | Start | Finish | Predecessors | Total float |
| --- | --- | --- | --- | --- | --- | --- | --- |
| 71 |  | Obtain user feedback | 1w | 2015-02-27 | 2015-03-06 | 70 | 0d |
| 72 |  | Evaluate testing information | 1d | 2015-03-06 | 2015-03-09 | 71 | 0d |
| 73 |  | Pilot complete | 0d | 2015-03-09 | 2015-03-09 | 72 | 0d |
| 74 | 9 | **Deployment** | 5d | 2015-03-09 | 2015-03-16 |  | 0d |
| 75 |  | Determine final deployment strategy | 1d | 2015-03-09 | 2015-03-10 | 73 | 0d |
| 76 |  | Develop deployment methodology | 1d | 2015-03-10 | 2015-03-11 | 75 | 0d |
| 77 |  | Secure deployment resources | 1d | 2015-03-11 | 2015-03-12 | 76 | 0d |
| 78 |  | Train support staff | 1d | 2015-03-12 | 2015-03-13 | 77 | 0d |
| 79 |  | Deploy software | 1d | 2015-03-13 | 2015-03-16 | 78 | 0d |
| 80 |  | Deployment complete | 0d | 2015-03-16 | 2015-03-16 | 79 | 0d |
| 81 | 10 | **Post Implementation Review** | 3d | 2015-03-16 | 2015-03-19 |  | 0d |
| 82 |  | Document lessons learned | 1d | 2015-03-16 | 2015-03-17 | 80 | 0d |
| 83 |  | Distribute to team members | 1d | 2015-03-17 | 2015-03-18 | 82 | 0d |
| 84 |  | Create software maintenance team | 1d | 2015-03-18 | 2015-03-19 | 83 | 0d |
| 85 |  | Post implementation review complete | 0d | 2015-03-19 | 2015-03-19 | 84 | 0d |
| 86 |  | Software development template complete | 0d | 2015-03-19 | 2015-03-19 | 85 | 0d |

## Version 2 (data date 2014-11-29, saved 2014-11-21, file software!00 plan.mpp)

Note of the change: Merge remote-tracking branch 'origin/Enhancement-Restart' into CheckClass

Last finish 2015-03-19 → 2015-04-22 (+34d). Complete tasks 0 → 9.

Added:

| ID | Task | Duration | Start | Finish | Predecessors | Constraint | Resources |
| --- | --- | --- | --- | --- | --- | --- | --- |
| 87 | **Dependencies** | 0d | 2014-11-06 | 2014-11-06 |  |  |  |
| 88 | Outbound | 0d | 2014-11-06 | 2014-11-06 |  |  |  |
| 89 | Inbound | 0d | 2014-11-06 | 2014-11-06 |  |  |  |
| 90 | Task 4 | 5d | 2014-11-27 A | 2014-12-04 |  |  |  |
| 91 | Task 5 | 5d | 2014-12-04 | 2014-12-11 | 90 |  |  |
| 92 | Task 6 | 5d | 2014-12-11 | 2014-12-18 | 91 |  |  |
| 93 | Task 7 | 5d | 2014-12-19 | 2015-01-07 | 92 |  |  |
| 94 | Task 8 | 5d | 2015-01-07 | 2015-01-14 | 93 |  |  |
| 95 | Task 9 | 5d | 2014-12-23 | 2015-01-11 | 94 | must finish on 2015-01-11 |  |
| 96 | **Task 10** | 32.5d | 2015-01-12 A | 2015-02-27 | 95 |  | Developer |
| 97 | Task 11 | 5d | 2015-01-12 | 2015-01-19 |  |  |  |
| 98 | Task 12 | 5d | 2015-01-29 | 2015-02-05 | 97 |  |  |
| 99 | Task 13 | 5d | 2015-02-05 | 2015-02-12 | 98 |  |  |
| 100 | Task 14 | 5d | 2015-02-20 A | 2015-02-27 A | 99 |  |  |

Changed:

| ID | Task | Start | Finish | Duration | Complete | Total float | Other |
| --- | --- | --- | --- | --- | --- | --- | --- |
| 1 | **Scope** | 2014-11-06 A | 2014-11-11 A |  | 0% → 100% | 0d → none | baseline start none → 2014-11-06; baseline finish none → 2014-11-11 |
| 2 | Determine project scope | 2014-11-06 A | 2014-11-06 A |  | 0% → 100% | 0d → none | baseline start none → 2014-11-06; baseline finish none → 2014-11-06 |
| 3 | Secure project sponsorship | 2014-11-06 A | 2014-11-07 A |  | 0% → 100% | 0d → none | baseline start none → 2014-11-06; baseline finish none → 2014-11-07 |
| 4 | Define preliminary resources | 2014-11-07 A | 2014-11-10 A |  | 0% → 100% | 0d → none | baseline start none → 2014-11-07; baseline finish none → 2014-11-10 |
| 5 | Secure core resources | 2014-11-10 A | 2014-11-11 A |  | 0% → 100% | 0d → none | baseline start none → 2014-11-10; baseline finish none → 2014-11-11 |
| 6 | Scope complete | 2014-11-11 A | 2014-11-11 A |  | 0% → 100% | 0d → none | baseline start none → 2014-11-11; baseline finish none → 2014-11-11 |
| 7 | **Analysis/Software Requirements** | 2014-11-11 A | 2014-12-01 → 2014-12-02 (+1d) |  | 0% → 71% |  | baseline start none → 2014-11-11; baseline finish none → 2014-12-02 |
| 8 | Conduct needs analysis | 2014-11-11 A | 2014-11-18 → 2014-11-19 A (+1d) |  | 0% → 100% | 0d → none | baseline start none → 2014-11-11; baseline finish none → 2014-11-19 |
| 9 | Draft preliminary software specifications | 2014-11-18 → 2014-11-19 A (+1d) | 2014-11-21 → 2014-11-24 A (+3d) |  | 0% → 100% | 0d → none | baseline start none → 2014-11-19; baseline finish none → 2014-11-24 |
| 10 | Develop preliminary budget | 2014-11-21 → 2014-11-24 A (+3d) | 2014-11-25 → 2014-11-26 A (+1d) |  | 0% → 100% | 0d → none | baseline start none → 2014-11-24; baseline finish none → 2014-11-26 |
| 11 | Review software specifications/budget with team | 2014-11-25 → 2014-11-26 (+1d) | 2014-11-25 → 2014-11-26 (+1d) |  |  |  | baseline start none → 2014-11-26; baseline finish none → 2014-11-26 |
| 12 | Incorporate feedback on software specifications |  | 2014-11-26 → 2014-11-27 (+1d) |  |  |  | baseline start none → 2014-11-26; baseline finish none → 2014-11-27 |
| 13 | Develop delivery timeline | 2014-11-27 → 2014-11-28 (+1d) | 2014-11-27 → 2014-12-01 (+4d) |  |  |  | baseline start none → 2014-11-28; baseline finish none → 2014-12-01 |
| 14 | Obtain approvals to proceed (concept, timeline, budget) | 2014-11-28 → 2014-12-01 (+3d) | 2014-11-28 → 2014-12-01 (+3d) |  |  |  | baseline start none → 2014-12-01; baseline finish none → 2014-12-01 |
| 15 | Secure required resources | 2014-11-28 → 2014-12-01 (+3d) | 2014-12-01 → 2014-12-02 (+1d) |  |  |  | baseline start none → 2014-12-01; baseline finish none → 2014-12-02 |
| 16 | Analysis complete | 2014-12-01 → 2014-12-02 (+1d) | 2014-12-01 → 2014-12-02 (+1d) |  |  |  | baseline start none → 2014-12-02; baseline finish none → 2014-12-02 |
| 17 | **Design** | 2014-12-01 → 2014-12-02 (+1d) | 2014-12-19 → 2015-01-05 (+17d) |  |  |  | baseline start none → 2014-12-02; baseline finish none → 2015-01-05 |
| 18 | Review preliminary software specifications | 2014-12-01 → 2014-12-02 (+1d) | 2014-12-03 → 2014-12-04 (+1d) |  |  |  | baseline start none → 2014-12-02; baseline finish none → 2014-12-04 |
| 19 | Develop functional specifications | 2014-12-03 → 2014-12-04 (+1d) | 2014-12-10 → 2014-12-12 (+2d) |  |  |  | baseline start none → 2014-12-04; baseline finish none → 2014-12-12 |
| 20 | Develop prototype based on functional specifications | 2014-12-10 → 2014-12-12 (+2d) | 2014-12-16 → 2014-12-18 (+2d) |  |  |  | baseline start none → 2014-12-12; baseline finish none → 2014-12-18 |
| 21 | Review functional specifications | 2014-12-16 → 2014-12-18 (+2d) | 2014-12-18 → 2014-12-22 (+4d) |  |  |  | baseline start none → 2014-12-18; baseline finish none → 2014-12-22 |
| 22 | Incorporate feedback into functional specifications | 2014-12-18 → 2014-12-22 (+4d) | 2014-12-19 → 2014-12-23 (+4d) |  |  |  | baseline start none → 2014-12-22; baseline finish none → 2014-12-23 |
| 23 | Obtain approval to proceed | 2014-12-19 → 2014-12-23 (+4d) | 2014-12-19 → 2015-01-05 (+17d) |  |  |  | baseline start none → 2014-12-23; baseline finish none → 2015-01-05 |
| 24 | Design complete | 2014-12-19 → 2015-01-05 (+17d) | 2014-12-19 → 2015-01-05 (+17d) |  |  |  | baseline start none → 2015-01-05; baseline finish none → 2015-01-05 |
| 25 | **Development** | 2014-12-22 → 2015-01-05 (+14d) | 2015-01-20 → 2015-02-05 (+16d) |  |  |  | baseline start none → 2015-01-05; baseline finish none → 2015-02-05 |
| 26 | Review functional specifications | 2014-12-22 → 2015-01-05 (+14d) | 2014-12-22 → 2015-01-06 (+15d) |  |  |  | baseline start none → 2015-01-05; baseline finish none → 2015-01-06 |
| 27 | Identify modular/tiered design parameters | 2014-12-23 → 2015-01-06 (+14d) | 2014-12-23 → 2015-01-07 (+15d) |  |  |  | baseline start none → 2015-01-06; baseline finish none → 2015-01-07 |
| 28 | Assign development staff | 2014-12-24 → 2015-01-07 (+14d) | 2014-12-24 → 2015-01-08 (+15d) |  |  |  | baseline start none → 2015-01-07; baseline finish none → 2015-01-08 |
| 29 | Develop code | 2014-12-25 → 2015-01-08 (+14d) | 2015-01-14 → 2015-01-30 (+16d) |  |  |  | baseline start none → 2015-01-08; baseline finish none → 2015-01-30 |
| 30 | Developer testing (primary debugging) | 2014-12-30 → 2015-01-14 (+15d) | 2015-01-20 → 2015-02-05 (+16d) |  |  |  | baseline start none → 2015-01-14; baseline finish none → 2015-02-05 |
| 31 | Development complete | 2015-01-20 → 2015-02-05 (+16d) | 2015-01-20 → 2015-02-05 (+16d) |  |  |  | baseline start none → 2015-02-05; baseline finish none → 2015-02-05 |
| 32 | **Testing** | 2014-12-22 → 2015-01-05 (+14d) | 2015-02-26 → 2015-03-18 (+20d) |  |  | 15d → 22d | baseline start none → 2015-01-05; baseline finish none → 2015-03-18 |
| 33 | Develop unit test plans using product specifications | 2014-12-22 → 2015-01-05 (+14d) | 2014-12-25 → 2015-01-09 (+15d) |  |  | 17.75d → 24.75d | baseline start none → 2015-01-05; baseline finish none → 2015-01-09 |
| 34 | Develop integration test plans using product specifications | 2014-12-22 → 2015-01-05 (+14d) | 2014-12-25 → 2015-01-09 (+15d) |  |  | 59.75d → 66.75d | baseline start none → 2015-01-05; baseline finish none → 2015-01-09 |
| 35 | **Unit Testing** | 2015-01-20 → 2015-02-05 (+16d) | 2015-02-10 → 2015-02-27 (+17d) |  |  | 0d → 7d | baseline start none → 2015-02-05; baseline finish none → 2015-02-27 |
| 36 | Review modular code | 2015-01-20 → 2015-02-05 (+16d) | 2015-01-27 → 2015-02-12 (+16d) |  |  | 0d → 7d | baseline start none → 2015-02-05; baseline finish none → 2015-02-12 |
| 37 | Test component modules to product specifications | 2015-01-27 → 2015-02-12 (+16d) | 2015-01-29 → 2015-02-16 (+18d) |  |  | 0d → 7d | baseline start none → 2015-02-12; baseline finish none → 2015-02-16 |
| 38 | Identify anomalies to product specifications | 2015-01-29 → 2015-02-16 (+18d) | 2015-02-03 → 2015-02-19 (+16d) |  |  | 0d → 7d | baseline start none → 2015-02-16; baseline finish none → 2015-02-19 |
| 39 | Modify code | 2015-02-03 → 2015-02-20 (+17d) | 2015-02-06 → 2015-02-25 (+19d) |  |  | 0d → 7d | baseline start none → 2015-02-20; baseline finish none → 2015-02-25 |
| 40 | Re-test modified code | 2015-02-06 → 2015-02-25 (+19d) | 2015-02-10 → 2015-02-27 (+17d) |  |  | 0d → 7d | baseline start none → 2015-02-25; baseline finish none → 2015-02-27 |
| 41 | Unit testing complete | 2015-02-10 → 2015-02-27 (+17d) | 2015-02-10 → 2015-02-27 (+17d) |  |  | 0d → 7d | baseline start none → 2015-02-27; baseline finish none → 2015-02-27 |
| 42 | **Integration Testing** | 2015-02-10 → 2015-02-27 (+17d) | 2015-02-26 → 2015-03-18 (+20d) |  |  | 0d → 7d | baseline start none → 2015-02-27; baseline finish none → 2015-03-18 |
| 43 | Test module integration | 2015-02-10 → 2015-02-27 (+17d) | 2015-02-17 → 2015-03-06 (+17d) |  |  | 0d → 7d | baseline start none → 2015-02-27; baseline finish none → 2015-03-06 |
| 44 | Identify anomalies to specifications | 2015-02-17 → 2015-03-06 (+17d) | 2015-02-19 → 2015-03-10 (+19d) |  |  | 0d → 7d | baseline start none → 2015-03-06; baseline finish none → 2015-03-10 |
| 45 | Modify code | 2015-02-19 → 2015-03-10 (+19d) | 2015-02-24 → 2015-03-13 (+17d) |  |  | 0d → 7d | baseline start none → 2015-03-10; baseline finish none → 2015-03-13 |
| 46 | Re-test modified code | 2015-02-24 → 2015-03-16 (+20d) | 2015-02-26 → 2015-03-18 (+20d) |  |  | 0d → 7d | baseline start none → 2015-03-16; baseline finish none → 2015-03-18 |
| 47 | Integration testing complete | 2015-02-26 → 2015-03-18 (+20d) | 2015-02-26 → 2015-03-18 (+20d) |  |  | 0d → 7d | baseline start none → 2015-03-18; baseline finish none → 2015-03-18 |
| 48 | **Training** | 2014-12-22 → 2015-01-05 (+14d) | 2015-02-23 → 2015-03-27 (+32d) | 45.75d → 55.75d |  | 3d → 0d | baseline start none → 2015-01-05; baseline finish none → 2015-03-27 |
| 49 | Develop training specifications for end users | 2014-12-22 → 2015-01-05 (+14d) | 2014-12-24 → 2015-01-08 (+15d) |  |  | 21.75d → 18.75d | baseline start none → 2015-01-05; baseline finish none → 2015-01-08 |
| 50 | Develop training specifications for helpdesk support staff | 2014-12-22 → 2015-01-05 (+14d) | 2014-12-24 → 2015-01-08 (+15d) |  |  | 21.75d → 18.75d | baseline start none → 2015-01-05; baseline finish none → 2015-01-08 |
| 51 | Identify training delivery methodology (computer based training, classroom, etc.) | 2014-12-22 → 2015-01-05 (+14d) | 2014-12-23 → 2015-01-07 (+15d) |  |  | 22.75d → 19.75d | baseline start none → 2015-01-05; baseline finish none → 2015-01-07 |
| 52 | Develop training materials | 2015-01-20 → 2015-02-05 (+16d) | 2015-02-10 → 2015-03-13 (+31d) | 3w → 5w |  | 3d → 0d | baseline start none → 2015-02-05; baseline finish none → 2015-03-13 |
| 53 | Conduct training usability study | 2015-02-10 → 2015-03-16 (+34d) | 2015-02-16 → 2015-03-20 (+32d) |  |  | 3d → 0d | baseline start none → 2015-03-16; baseline finish none → 2015-03-20 |
| 54 | Finalize training materials | 2015-02-16 → 2015-03-20 (+32d) | 2015-02-19 → 2015-03-25 (+34d) |  |  | 3d → 0d | baseline start none → 2015-03-20; baseline finish none → 2015-03-25 |
| 55 | Develop training delivery mechanism | 2015-02-19 → 2015-03-25 (+34d) | 2015-02-23 → 2015-03-27 (+32d) |  |  | 3d → 0d | baseline start none → 2015-03-25; baseline finish none → 2015-03-27 |
| 56 | Training materials complete | 2015-02-23 → 2015-03-27 (+32d) | 2015-02-23 → 2015-03-27 (+32d) |  |  | 3d → 0d | baseline start none → 2015-03-27; baseline finish none → 2015-03-27 |
| 57 | **Documentation** | 2014-12-22 → 2015-01-05 (+14d) | 2015-02-02 → 2015-02-18 (+16d) |  |  | 18.25d → 25.25d | baseline start none → 2015-01-05; baseline finish none → 2015-02-18 |
| 58 | Develop Help specification | 2014-12-22 → 2015-01-05 (+14d) | 2014-12-22 → 2015-01-06 (+15d) |  |  | 27.75d → 34.75d | baseline start none → 2015-01-05; baseline finish none → 2015-01-06 |
| 59 | Develop Help system | 2015-01-05 → 2015-01-20 (+15d) | 2015-01-26 → 2015-02-11 (+16d) |  |  | 18.25d → 25.25d | baseline start none → 2015-01-20; baseline finish none → 2015-02-11 |
| 60 | Review Help documentation | 2015-01-26 → 2015-02-11 (+16d) | 2015-01-29 → 2015-02-16 (+18d) |  |  | 18.25d → 25.25d | baseline start none → 2015-02-11; baseline finish none → 2015-02-16 |
| 61 | Incorporate Help documentation feedback | 2015-01-29 → 2015-02-16 (+18d) | 2015-02-02 → 2015-02-18 (+16d) |  |  | 18.25d → 25.25d | baseline start none → 2015-02-16; baseline finish none → 2015-02-18 |
| 62 | Develop user manuals specifications | 2014-12-22 → 2015-01-05 (+14d) | 2014-12-23 → 2015-01-07 (+15d) |  |  | 27.75d → 34.75d | baseline start none → 2015-01-05; baseline finish none → 2015-01-07 |
| 63 | Develop user manuals | 2015-01-05 → 2015-01-20 (+15d) | 2015-01-26 → 2015-02-11 (+16d) |  |  | 19.25d → 26.25d | baseline start none → 2015-01-20; baseline finish none → 2015-02-11 |
| 64 | Review all user documentation | 2015-01-26 → 2015-02-11 (+16d) | 2015-01-28 → 2015-02-13 (+16d) |  |  | 19.25d → 26.25d | baseline start none → 2015-02-11; baseline finish none → 2015-02-13 |
| 65 | Incorporate user documentation feedback | 2015-01-28 → 2015-02-13 (+16d) | 2015-01-30 → 2015-02-17 (+18d) |  |  | 19.25d → 26.25d | baseline start none → 2015-02-13; baseline finish none → 2015-02-17 |
| 66 | Documentation complete | 2015-02-02 → 2015-02-18 (+16d) | 2015-02-02 → 2015-02-18 (+16d) |  |  | 18.25d → 25.25d | baseline start none → 2015-02-18; baseline finish none → 2015-02-18 |
| 67 | **Pilot** | 2014-12-01 → 2014-12-02 (+1d) | 2015-03-09 → 2015-04-10 (+32d) | 70.25d → 77.25d |  |  | baseline start none → 2014-12-02; baseline finish none → 2015-04-10 |
| 68 | Identify test group | 2014-12-01 → 2014-12-02 (+1d) | 2014-12-02 → 2014-12-03 (+1d) |  |  | 61.25d → 68.25d | baseline start none → 2014-12-02; baseline finish none → 2014-12-03 |
| 69 | Develop software delivery mechanism | 2014-12-02 → 2014-12-03 (+1d) | 2014-12-03 → 2014-12-04 (+1d) |  |  | 61.25d → 68.25d | baseline start none → 2014-12-03; baseline finish none → 2014-12-04 |
| 70 | Install/deploy software | 2015-02-26 → 2015-03-27 (+29d) | 2015-02-27 → 2015-03-30 (+31d) |  |  |  | baseline start none → 2015-03-27; baseline finish none → 2015-03-30 |

| ID | Task | Start | Finish | Other |
| --- | --- | --- | --- | --- |
| 71 | Obtain user feedback | 2015-02-27 → 2015-03-30 (+31d) | 2015-03-06 → 2015-04-08 (+33d) | baseline start none → 2015-03-30; baseline finish none → 2015-04-08 |
| 72 | Evaluate testing information | 2015-03-06 → 2015-04-09 (+34d) | 2015-03-09 → 2015-04-10 (+32d) | baseline start none → 2015-04-09; baseline finish none → 2015-04-10 |
| 73 | Pilot complete | 2015-03-09 → 2015-04-10 (+32d) | 2015-03-09 → 2015-04-10 (+32d) | baseline start none → 2015-04-10; baseline finish none → 2015-04-10 |
| 74 | **Deployment** | 2015-03-09 → 2015-04-10 (+32d) | 2015-03-16 → 2015-04-17 (+32d) | baseline start none → 2015-04-10; baseline finish none → 2015-04-17 |
| 75 | Determine final deployment strategy | 2015-03-09 → 2015-04-10 (+32d) | 2015-03-10 → 2015-04-13 (+34d) | baseline start none → 2015-04-10; baseline finish none → 2015-04-13 |
| 76 | Develop deployment methodology | 2015-03-10 → 2015-04-13 (+34d) | 2015-03-11 → 2015-04-14 (+34d) | baseline start none → 2015-04-13; baseline finish none → 2015-04-14 |
| 77 | Secure deployment resources | 2015-03-11 → 2015-04-14 (+34d) | 2015-03-12 → 2015-04-15 (+34d) | baseline start none → 2015-04-14; baseline finish none → 2015-04-15 |
| 78 | Train support staff | 2015-03-12 → 2015-04-15 (+34d) | 2015-03-13 → 2015-04-16 (+34d) | baseline start none → 2015-04-15; baseline finish none → 2015-04-16 |
| 79 | Deploy software | 2015-03-13 → 2015-04-16 (+34d) | 2015-03-16 → 2015-04-17 (+32d) | baseline start none → 2015-04-16; baseline finish none → 2015-04-17 |
| 80 | Deployment complete | 2015-03-16 → 2015-04-17 (+32d) | 2015-03-16 → 2015-04-17 (+32d) | baseline start none → 2015-04-17; baseline finish none → 2015-04-17 |
| 81 | **Post Implementation Review** | 2015-03-16 → 2015-04-17 (+32d) | 2015-03-19 → 2015-04-22 (+34d) | baseline start none → 2015-04-17; baseline finish none → 2015-04-22 |
| 82 | Document lessons learned | 2015-03-16 → 2015-04-17 (+32d) | 2015-03-17 → 2015-04-20 (+34d) | baseline start none → 2015-04-17; baseline finish none → 2015-04-20 |
| 83 | Distribute to team members | 2015-03-17 → 2015-04-20 (+34d) | 2015-03-18 → 2015-04-21 (+34d) | baseline start none → 2015-04-20; baseline finish none → 2015-04-21 |
| 84 | Create software maintenance team | 2015-03-18 → 2015-04-21 (+34d) | 2015-03-19 → 2015-04-22 (+34d) | baseline start none → 2015-04-21; baseline finish none → 2015-04-22 |
| 85 | Post implementation review complete | 2015-03-19 → 2015-04-22 (+34d) | 2015-03-19 → 2015-04-22 (+34d) | baseline start none → 2015-04-22; baseline finish none → 2015-04-22 |
| 86 | Software development template complete | 2015-03-19 → 2015-04-22 (+34d) | 2015-03-19 → 2015-04-22 (+34d) | baseline start none → 2015-04-22; baseline finish none → 2015-04-22 |
